# Long Binh Manufacturing Plant Construction Project

Schedule from MS Project, 2021-05-31 to 2023-03-30, costs in ₫.
Global Manufacturing Constructions S.r.l.

## Calendars

- Standard: Mon-Fri 08:00-12:00, 13:00-17:00; Sat-Sun off.

## Resources

| Resource | Rate | Cost per use |
| --- | --- | --- |
| Project manager | 3542760 |  |
| Site manager | 1359050 |  |
| Installation supervisor | 1635120 |  |
| Team of Vietnamese workers (4 workers each) | 1291100 |  |
| Team of Italian workers (4 workers each) | 5450400 |  |
| Project engineer | 2588940 |  |
| Specialized engineer | 2180160 |  |
| Purchasing agent | 1907640 |  |
| Software engineer | 2316420 |  |
| Software developer | 1907640 |  |
| Sub-contractor (Finishes) |  | 33636240000 |
| Single-spindle CNC machine | 9265680000 |  |
| Double-spindle CNC machine | 13626000000 |  |
| Intermediate washing station | 14443560000 |  |
| Final washing station | 26434440000 |  |
| Drilling machine | 7358040000 |  |
| Assembly station | 29977200000 |  |
| Manipulator | 299772000 |  |
| Gantry loader (including robots) | 2616192000 |  |
| Powered conveyor | 7685064000 |  |
| Rotating table | 436032000 |  |
| Overhead conveyor | 2057526000 |  |
| Lift/lower component | 441482400 |  |
| Metal footbridge | 59954400 |  |
| Protection grids including doors | 8759882880 |  |
| Line manufacturing ICT system | 4251312000 |  |
| Sub-contractor (Building services) |  | 103966560000 |
| Sub-contractor (Enclosures) |  | 1266455400 |
| Sub-contractor (Industrial flooring) |  | 48925440000 |
| Sub-contractor (Site installation) |  | 18347040000 |
| Sub-contractor (Excavations & Foundations) |  | 39751920000 |
| Sub-contractor (Structures) |  | 122313600000 |
| Sub-contractor (Roofing) |  | 61156800000 |
| Supplier |  |  |
| Local Authorities |  |  |
| Ship |  |  |
| Software developer travel cost | 3815280 |  |
| Project engineer travel cost | 3815280 |  |
| Installation supervisor travel cost | 3815280 |  |
| Site manager travel cost | 3815280 |  |
| Owner |  |  |
| Single-spindle CNC machine trasportation | 48508560 |  |
| Double-spindle CNC machine trasportation | 77940720 |  |
| Intermediate washing station trasportation | 54504000 |  |
| Final washing station trasportation | 85843800 |  |
| Drilling machine trasportation | 49053600 |  |
| Assembly station trasportation | 91294200 |  |
| Manipulator trasportation | 27252000 |  |
| Gantry loader (including robots) trasportation | 20439000 |  |
| Powered conveyor trasportation | 98107200 |  |
| Rotating table trasportation | 32702400 |  |
| Overhead conveyor trasportation | 42240600 |  |
| Lift/lower component trasportation | 38152800 |  |
| Metal footbridge trasportation | 13626000 |  |
| Protection grids including doors trasportation | 102195000 |  |
| Project manager travel cost | 3815280 |  |
| Option B |  |  |

## Schedule

| ID | WBS | Task | Type | Duration | Start | Finish | Predecessors | Baseline start | Baseline finish | Baseline duration | Total slack | Free slack | Constraint | Resources | Work | Cost | Baseline cost |
| --- | --- | --- | --- | --- | --- | --- | --- | --- | --- | --- | --- | --- | --- | --- | --- | --- | --- |
| 1 | 1 | **PROJECT** |  | 478.97d? | 2021-05-31 | 2023-03-30 |  | 2021-05-31 | 2023-03-30 | 478.97d? | 0d |  |  |  | 25328.3h | 823,892,314,820 | 823,892,314,820 |
| 2 | 1.1 | Start | milestone | 0d | 2021-05-31 | 2021-05-31 |  | 2021-05-31 | 2021-05-31 | 0d | 0d |  |  |  |  |  |  |
| 3 | 1.2 | **INITIALIZATION** |  | 109.5d? | 2021-05-31 | 2021-10-29 |  | 2021-05-31 | 2021-10-29 | 109.5d? | 0d |  |  |  | 3156h | 9,593,521,560 | 9,593,521,560 |
| 4 | 1.2.1 | **START-UP** |  | 7d | 2021-05-31 | 2021-06-08 |  | 2021-05-31 | 2021-06-08 | 7d | 0d |  |  |  | 56h | 198,394,560 | 198,394,560 |
| 5 | 1.2.1.1 | Contract finalization and signature |  | 2d | 2021-05-31 | 2021-06-01 | 2 | 2021-05-31 | 2021-06-01 | 2d | 0d |  |  | Project manager | 16h | 56,684,160 | 56,684,160 |
| 6 | 1.2.1.2 | Detailed Planning |  | 5d | 2021-06-02 | 2021-06-08 | 5 | 2021-06-02 | 2021-06-08 | 5d | 0d |  |  | Project manager | 40h | 141,710,400 | 141,710,400 |
| 7 | 1.2.2 | **ENGINEERING PHASE** |  | 102.5d? | 2021-06-09 | 2021-10-29 |  | 2021-06-09 | 2021-10-29 | 102.5d? | 0d |  |  |  | 3100h | 9,395,127,000 | 9,395,127,000 |
| 8 | 1.2.2.1 | Detailed Engineering - Process |  | 13.12d | 2021-07-05 | 2021-07-22 | 11 | 2021-07-05 | 2021-07-22 | 13.12d | 5.83d | 0d |  | Project engineer [200%]; Specialized engineer [200%] | 350h | 848,899,800 | 848,899,800 |
| 9 | 1.2.2.2 | Detailed Engineering - Layout |  | 9.38d? | 2021-07-22 | 2021-08-05 | 8 | 2021-07-22 | 2021-08-05 | 9.38d? | 5.83d | 0d |  | Project engineer [200%]; Specialized engineer [200%] | 260h | 628,158,600 | 628,158,600 |
| 10 | 1.2.2.3 | Detailed Engineering - Utilities |  | 7.5d? | 2021-08-05 | 2021-08-16 | 9 | 2021-08-05 | 2021-08-16 | 7.5d? | 5.83d | 0d |  | Project engineer [200%]; Specialized engineer [200%] | 210h | 506,887,200 | 506,887,200 |
| 11 | 1.2.2.4 | Industrial Building Design |  | 18.75d? | 2021-06-09 | 2021-07-05 | 6 | 2021-06-09 | 2021-07-05 | 18.75d? | 0d |  |  | Project engineer [200%]; Specialized engineer [200%] | 510h | 1,234,515,600 | 1,234,515,600 |
| 12 | 1.2.2.5 | Line manufacturing ICT system specification & development |  | 25d | 2021-08-16 | 2021-09-20 | 10 | 2021-08-16 | 2021-09-20 | 25d | 203.05d | 194.23d |  | Software developer [200%]; Software engineer [300%]; Line manufacturing ICT system | 610h | 5,500,816,200 | 5,500,816,200 |
| 13 | 1.2.2.6 | Approval of engineering by the client |  | 20d | 2021-08-03 | 2021-08-31 | 10SS-2.23d | 2021-08-03 | 2021-08-31 | 20d | 11.79d | 5.96d |  | Owner | 160h |  |  |
| 14 | 1.2.2.7 | Permits and authorizations from local authorities |  | 90d | 2021-06-25 | 2021-10-29 | 11SS+12.5d | 2021-06-25 | 2021-10-29 | 90d | 0d |  | start no earlier than 2021-06-25 | Project engineer [200%]; Specialized engineer [200%]; Local Authorities | 1000h | 675,849,600 | 675,849,600 |
| 15 | 1.3 | **WORK IN ITALY** |  | 293.23d? | 2021-07-05 | 2022-08-18 |  | 2021-07-05 | 2022-08-18 | 293.22d? | 5.82d |  |  |  | 9896h | 331,760,942,640 | 331,760,942,640 |
| 16 | 1.3.1 | **PURCHASE CIVIL WORKS** |  | 33d? | 2021-07-05 | 2021-08-19 |  | 2021-07-05 | 2021-08-19 | 33d? | 50.75d |  |  |  | 120h | 250,718,400 | 250,718,400 |
| 17 | 1.3.1.1 | Request for proposals |  | 2.5d? | 2021-07-05 | 2021-07-08 | 11 | 2021-07-05 | 2021-07-08 | 2.5d? | 57.5d | 0d |  | Purchasing agent [200%] | 40h | 76,305,600 | 76,305,600 |
| 18 | 1.3.1.2 | Collection of proposals |  | 20d | 2021-07-08 | 2021-08-05 | 17 | 2021-07-08 | 2021-08-05 | 20d | 57.5d | 6.75d |  |  |  |  |  |
| 19 | 1.3.1.3 | Competitive proposal analysis |  | 2.75d | 2021-08-16 | 2021-08-18 | 18 | 2021-08-16 | 2021-08-18 | 2.75d | 50.75d | 0d | start no earlier than 2021-08-16 | Project engineer [200%]; Purchasing agent [200%] | 64h | 143,890,560 | 143,890,560 |
| 20 | 1.3.1.4 | Orders |  | 1d | 2021-08-18 | 2021-08-19 | 19 | 2021-08-18 | 2021-08-19 | 1d | 50.75d |  |  | Purchasing agent [200%] | 16h | 30,522,240 | 30,522,240 |
| 21 | 1.3.2 | **PURCHASE MACHINES** |  | 21.6d? | 2021-08-16 | 2021-09-15 |  | 2021-08-16 | 2021-09-15 | 21.6d? | 5.82d |  |  |  | 120h | 250,718,400 | 250,718,400 |
| 22 | 1.3.2.1 | Request for proposals |  | 2.5d? | 2021-08-16 | 2021-08-19 | 10 | 2021-08-16 | 2021-08-19 | 2.5d? | 5.83d | 0d |  | Purchasing agent [200%] | 40h | 76,305,600 | 76,305,600 |
| 23 | 1.3.2.2 | Collection of proposals |  | 20d | 2021-08-18 | 2021-09-15 | 22SS+1.6d | 2021-08-18 | 2021-09-15 | 20d | 5.83d | 0d |  |  |  |  |  |
| 24 | 1.3.2.3 | Competitive proposal analysis |  | 2d | 2021-09-06 | 2021-09-08 | 23SS+13.3d | 2021-09-06 | 2021-09-08 | 2d | 5.83d | 0d |  | Project engineer [200%]; Purchasing agent [200%] | 64h | 143,890,560 | 143,890,560 |
| 25 | 1.3.2.4 | Orders |  | 1d | 2021-09-07 | 2021-09-08 | 24SS+1.33d, 13 | 2021-09-07 | 2021-09-08 | 1d | 5.83d | 0d |  | Purchasing agent [200%] | 16h | 30,522,240 | 30,522,240 |

| ID | WBS | Task | Duration | Start | Finish | Predecessors | Baseline start | Baseline finish | Baseline duration | Total slack | Free slack | Resources | Work | Cost | Baseline cost |
| --- | --- | --- | --- | --- | --- | --- | --- | --- | --- | --- | --- | --- | --- | --- | --- |
| 26 | 1.3.3 | **EQUIPMENT MANUFACTURING** | 167d | 2021-09-08 | 2022-04-29 |  | 2021-09-08 | 2022-04-29 | 167d | 5.82d |  |  | 5768h | 311,145,349,680 | 311,145,349,680 |
| 27 | 1.3.3.1 | CNC machine (single-spindle and double-spindle) op10, 80 | 110d | 2021-10-08 | 2022-03-11 | 25FS+22d | 2021-10-08 | 2022-03-11 | 110d | 8.82d | 0d | Double-spindle CNC machine [200%]; Single-spindle CNC machine [200%] |  | 45,783,360,000 | 45,783,360,000 |
| 28 | 1.3.3.2 | CNC machine (single-spindle and double-spindle) op30 | 110d | 2021-10-14 | 2022-03-17 | 25FS+26d | 2021-10-14 | 2022-03-17 | 110d | 14.82d | 9d | Double-spindle CNC machine [200%] |  | 27,252,000,000 | 27,252,000,000 |
| 29 | 1.3.3.3 | CNC machine (single-spindle and double-spindle) op40 | 110d | 2021-09-08 | 2022-02-09 | 25 | 2021-09-08 | 2022-02-09 | 110d | 5.82d | 0d | Double-spindle CNC machine [200%]; Supplier | 880h | 27,252,000,000 | 27,252,000,000 |
| 30 | 1.3.3.4 | CNC machine (single-spindle and double-spindle) op50, 90 | 110d | 2021-11-26 | 2022-04-29 | 25FS+57d | 2021-11-26 | 2022-04-29 | 110d | 8.82d | 0d | Double-spindle CNC machine [500%]; Supplier; Single-spindle CNC machine | 880h | 77,395,680,000 | 77,395,680,000 |
| 31 | 1.3.3.5 | Washing station | 70d | 2021-09-08 | 2021-12-15 | 25 | 2021-09-08 | 2021-12-15 | 70d | 16.82d | 0d | Final washing station; Intermediate washing station; Supplier | 560h | 40,878,000,000 | 40,878,000,000 |
| 32 | 1.3.3.6 | Drilling machine | 66d | 2021-09-08 | 2021-12-09 | 25 | 2021-09-08 | 2021-12-09 | 66d | 5.83d | 0d | Drilling machine; Supplier | 528h | 7,358,040,000 | 7,358,040,000 |
| 33 | 1.3.3.7 | Assembly station | 100d | 2021-09-08 | 2022-01-26 | 25 | 2021-09-08 | 2022-01-26 | 100d | 8.82d | 0d | Assembly station [200%]; Supplier | 800h | 59,954,400,000 | 59,954,400,000 |
| 34 | 1.3.3.8 | Gantry loaders and robotized arms | 95d | 2021-09-08 | 2022-01-19 | 25 | 2021-09-08 | 2022-01-19 | 95d | 20.82d | 6d | Gantry loader (including robots); Supplier | 760h | 2,616,192,000 | 2,616,192,000 |
| 35 | 1.3.3.9 | Material handling equipment (powered conveyors, overhead conveyors, lift/lower components, manipulators, rotating tables) | 130d | 2021-09-08 | 2022-03-09 | 25 | 2021-09-08 | 2022-03-09 | 130d | 55.82d | 41d | Lift/lower component; Manipulator [200%]; Overhead conveyor; Powered conveyor; Rotating table [700%]; Supplier | 1040h | 13,835,840,400 | 13,835,840,400 |
| 36 | 1.3.3.10 | Metal foodbridges and protection grids | 40d | 2021-09-08 | 2021-11-03 | 25 | 2021-09-08 | 2021-11-03 | 40d | 75.82d | 61d | Metal footbridge; Protection grids including doors; Supplier | 320h | 8,819,837,280 | 8,819,837,280 |
| 37 | 1.3.4 | **PRE- ERECTION** | 180d | 2021-12-09 | 2022-08-18 |  | 2021-12-09 | 2022-08-18 | 179.99d | 5.82d |  |  | 3888h | 20,114,156,160 | 20,114,156,160 |
| 38 | 1.3.4.1 | Op. 10-CNC machine (2 single-spindle) | 35d | 2022-03-11 | 2022-04-29 | 48, 34, 36, 27 | 2022-03-11 | 2022-04-29 | 35d | 8.82d | 0d | Team of Italian workers (4 workers each) | 280h | 1,526,112,000 | 1,526,112,000 |
| 39 | 1.3.4.2 | Op. 20-Drilling machine | 35d | 2021-12-09 | 2022-01-27 | 32 | 2021-12-09 | 2022-01-27 | 35d | 5.83d | 0d | Team of Italian workers (4 workers each) | 280h | 1,526,112,000 | 1,526,112,000 |
| 40 | 1.3.4.3 | Op. 30-CNC machine (2 double-spindle) | 35d | 2022-03-30 | 2022-05-18 | 41, 34, 36, 28 | 2022-03-17 | 2022-05-05 | 35d | 5.82d | 0d | Team of Italian workers (4 workers each) | 280h | 1,526,112,000 | 1,526,112,000 |
| 41 | 1.3.4.4 | Op. 40-CNC machine (2 double-spindle) | 35d | 2022-02-09 | 2022-03-30 | 39, 34, 36, 29 | 2022-01-27 | 2022-03-17 | 35d | 5.82d | 0d | Team of Italian workers (4 workers each) | 280h | 1,526,112,000 | 1,526,112,000 |
| 42 | 1.3.4.5 | Op. 50-CNC machine (1 single-spindle and 2 double-spindle) | 35d | 2022-04-29 | 2022-06-17 | 38, 34, 36, 30 | 2022-04-29 | 2022-06-17 | 35d | 8.82d | 3d | Team of Italian workers (4 workers each) | 280h | 1,526,112,000 | 1,526,112,000 |
| 43 | 1.3.4.6 | Op. 60-Washing station | 22d | 2021-12-15 | 2022-01-14 | 31 | 2021-12-15 | 2022-01-14 | 22d | 16.82d | 8d | Team of Italian workers (4 workers each) | 176h | 959,270,400 | 959,270,400 |
| 44 | 1.3.4.7 | Op. 70-Assembly station | 32d | 2022-01-26 | 2022-03-11 | 33, 43 | 2022-01-26 | 2022-03-11 | 32d | 8.82d | 0d | Team of Italian workers (4 workers each) | 256h | 1,395,302,400 | 1,395,302,400 |
| 45 | 1.3.4.8 | Op. 80-CNC machine (2 double-spindle) | 35d | 2022-03-11 | 2022-04-29 | 44, 34, 36, 27 | 2022-03-11 | 2022-04-29 | 35d | 8.82d | 0d | Team of Italian workers (4 workers each) | 280h | 1,526,112,000 | 1,526,112,000 |
| 46 | 1.3.4.9 | Op. 90-CNC machine (3 double-spindle) | 35d | 2022-04-29 | 2022-06-17 | 45, 34, 36, 30 | 2022-04-29 | 2022-06-17 | 35d | 8.82d | 3d | Team of Italian workers (4 workers each) | 280h | 1,526,112,000 | 1,526,112,000 |
| 47 | 1.3.4.10 | Op. 100-Washing station | 22d | 2021-12-15 | 2022-01-14 | 31 | 2021-12-15 | 2022-01-14 | 22d | 16.82d | 8d | Team of Italian workers (4 workers each) | 176h | 959,270,400 | 959,270,400 |
| 48 | 1.3.4.11 | Op. 110-Assembly station | 32d | 2022-01-26 | 2022-03-11 | 33, 47 | 2022-01-26 | 2022-03-11 | 32d | 8.82d | 0d | Team of Italian workers (4 workers each) | 256h | 1,395,302,400 | 1,395,302,400 |
| 49 | 1.3.4.12 | Material handling equipment (powered conveyors, overhead conveyors, lift/lower components, manipulators, rotating tables) | 25d | 2022-05-18 | 2022-06-22 | 35, 40 | 2022-05-05 | 2022-06-09 | 25d | 5.82d | 0d | Team of Italian workers (4 workers each) | 200h | 1,090,080,000 | 1,090,080,000 |
| 50 | 1.3.4.13 | Line manufacturing ICT system installation | 15d | 2022-06-22 | 2022-07-13 | 49, 42, 46, 12 | 2022-06-17 | 2022-07-08 | 15d | 5.82d | 0d | Software developer [200%] | 240h | 457,833,600 | 457,833,600 |
| 51 | 1.3.4.14 | Preliminary line testing | 8d | 2022-07-13 | 2022-07-25 | 50 | 2022-07-08 | 2022-07-20 | 8d | 5.82d | 0d | Software developer [200%]; Team of Italian workers (4 workers each) [200%] | 192h | 819,740,160 | 819,740,160 |
| 52 | 1.3.4.15 | Line disassembling (for all equipment) | 18d | 2022-07-25 | 2022-08-18 | 51, 90FF | 2022-07-25 | 2022-08-18 | 18d | 5.82d |  | Team of Italian workers (4 workers each) [300%] | 432h | 2,354,572,800 | 2,354,572,800 |

| ID | WBS | Task | Duration | Start | Finish | Predecessors | Baseline start | Baseline finish | Baseline duration | Total slack | Free slack | Resources | Work | Cost | Baseline cost |
| --- | --- | --- | --- | --- | --- | --- | --- | --- | --- | --- | --- | --- | --- | --- | --- |
| 53 | 1.4 | **WORK IN VIETNAM** | 297.62d? | 2021-10-29 | 2022-12-21 |  | 2021-10-29 | 2022-12-21 | 297.62d? | 0d |  |  | 6285.04h | 469,456,290,408 | 469,456,290,408 |
| 54 | 1.4.1 | **CIVIL WORKS ERECTION PHASE** | 231.3d | 2021-10-29 | 2022-09-19 |  | 2021-10-29 | 2022-09-19 | 231.3d | 0d |  |  | 3843.76h | 464,791,055,400 | 464,791,055,400 |
| 55 | 1.4.1.1 | Site installation | 15d | 2021-10-29 | 2021-11-19 | 20, 14 | 2021-10-29 | 2021-11-19 | 15d | 0d |  | Sub-contractor (Site installation); Option B [0.1%] | 120h | 53,774,040,000 | 53,774,040,000 |
| 56 | 1.4.1.2 | Excavations & Foundations | 48d | 2021-11-19 | 2022-01-26 | 55 | 2021-11-19 | 2022-01-26 | 48d | 0d |  | Sub-contractor (Excavations & Foundations) | 384h | 39,751,920,000 | 39,751,920,000 |
| 57 | 1.4.1.3 | Structures | 60d | 2021-12-07 | 2022-03-01 | 56SS+12d | 2021-12-07 | 2022-03-01 | 60d | 0d |  | Sub-contractor (Structures) | 480h | 122,313,600,000 | 122,313,600,000 |
| 58 | 1.4.1.4 | Roofing | 60d | 2021-12-28 | 2022-03-22 | 57SS+15d | 2021-12-28 | 2022-03-22 | 60d | 0d |  | Sub-contractor (Roofing) | 480h | 61,156,800,000 | 61,156,800,000 |
| 59 | 1.4.1.5 | Enclosures | 9.47d | 2022-01-18 | 2022-01-31 | 58SS+15d | 2022-01-18 | 2022-01-31 | 9.47d | 0d |  | Sub-contractor (Enclosures) | 75.76h | 1,266,455,400 | 1,266,455,400 |
| 60 | 1.4.1.6 | Industrial flooring | 48d | 2022-01-20 | 2022-03-29 | 59SS+2.3d | 2022-01-20 | 2022-03-29 | 48d | 0d |  | Sub-contractor (Industrial flooring) | 384h | 48,925,440,000 | 48,925,440,000 |
| 61 | 1.4.1.7 | Building services | 160d | 2022-02-07 | 2022-09-19 | 60SS+12d | 2022-02-07 | 2022-09-19 | 160d | 0d |  | Sub-contractor (Building services) | 1280h | 103,966,560,000 | 103,966,560,000 |
| 62 | 1.4.1.8 | Finishes | 80d | 2022-05-30 | 2022-09-19 | 61FF | 2022-05-30 | 2022-09-19 | 80d | 0d |  | Sub-contractor (Finishes) | 640h | 33,636,240,000 | 33,636,240,000 |
| 63 | 1.4.2 | **TRANSPORTATION PHASE** | 50.13d | 2022-08-15 | 2022-10-24 |  | 2022-08-15 | 2022-10-24 | 50.13d | 0d |  |  | 600h | 1,973,044,800 | 1,973,044,800 |
| 64 | 1.4.2.1 | Ship trasportation | 25d | 2022-08-15 | 2022-09-19 | 52SS+9d, 61FF-0.8d, 62FF | 2022-08-15 | 2022-09-19 | 25d | 0d |  | Ship; Double-spindle CNC machine trasportation [600%]; Final washing station trasportation; Gantry loader (including robots) trasportation; Metal footbridge trasportation; Single-spindle CNC machine trasportation [300%]; Protection grids including doors trasportation | 200h | 835,273,800 | 835,273,800 |
| 65 | 1.4.2.2 | Ship trasportation | 25d | 2022-09-05 | 2022-10-07 | 52, 68FF-0.95d | 2022-09-05 | 2022-10-07 | 25d | 0.95d |  | Ship; Assembly station trasportation; Double-spindle CNC machine trasportation [500%]; Intermediate washing station trasportation | 200h | 535,501,800 | 535,501,800 |
| 66 | 1.4.2.3 | Ship trasportation | 25d | 2022-09-19 | 2022-10-24 | 52, 71FF-3d | 2022-09-19 | 2022-10-24 | 25d | 3d |  | Ship; Assembly station trasportation; Drilling machine trasportation; Lift/lower component trasportation; Manipulator trasportation [200%]; Overhead conveyor trasportation; Powered conveyor trasportation; Rotating table trasportation [700%] | 200h | 602,269,200 | 602,269,200 |
| 67 | 1.4.3 | **ON SITE ERECTION** | 66.32d? | 2022-09-19 | 2022-12-21 |  | 2022-09-19 | 2022-12-21 | 66.32d? | 0d |  |  | 1841.28h | 2,692,190,208 | 2,692,190,208 |
| 68 | 1.4.3.1 | Op. 10-CNC machine (2 single-spindle) | 15.15d | 2022-09-19 | 2022-10-10 | 61, 62, 64 | 2022-09-19 | 2022-10-10 | 15.15d | 0d |  | Team of Vietnamese workers (4 workers each) | 121.2h | 156,481,320 | 156,481,320 |
| 69 | 1.4.3.2 | Op. 20-Drilling machine | 16.19d | 2022-10-27 | 2022-11-21 | 71, 66 | 2022-10-27 | 2022-11-21 | 16.19d | 0d |  | Team of Vietnamese workers (4 workers each) | 129.52h | 167,223,272 | 167,223,272 |
| 70 | 1.4.3.3 | Op. 30-CNC machine (2 double-spindle) | 15.15d | 2022-09-19 | 2022-10-10 | 68SS, 64 | 2022-09-19 | 2022-10-10 | 15.15d | 1.28d | 0d | Team of Vietnamese workers (4 workers each) | 121.2h | 156,481,320 | 156,481,320 |
| 71 | 1.4.3.4 | Op. 40-CNC machine (2 double-spindle) | 12.98d | 2022-10-10 | 2022-10-27 | 68, 65 | 2022-10-10 | 2022-10-27 | 12.98d | 0d |  | Team of Vietnamese workers (4 workers each) | 103.84h | 134,067,824 | 134,067,824 |
| 72 | 1.4.3.5 | Op. 50-CNC machine (1 single-spindle and 2 double-spindle) | 15.15d | 2022-09-19 | 2022-10-10 | 68SS, 64 | 2022-09-19 | 2022-10-10 | 15.15d | 10.99d | 0d | Team of Vietnamese workers (4 workers each) | 121.2h | 156,481,320 | 156,481,320 |
| 73 | 1.4.3.6 | Op. 60-Washing station | 12.98d | 2022-10-10 | 2022-10-27 | 70, 65 | 2022-10-10 | 2022-10-27 | 12.98d | 1.28d | 0d | Team of Vietnamese workers (4 workers each) | 103.84h | 134,067,824 | 134,067,824 |
| 74 | 1.4.3.7 | Op. 70-Assembly station | 18.18d | 2022-10-10 | 2022-11-04 | 72, 65 | 2022-10-10 | 2022-11-04 | 18.18d | 10.99d |  | Team of Vietnamese workers (4 workers each) | 145.44h | 187,777,584 | 187,777,584 |
| 75 | 1.4.3.8 | Op. 80-CNC machine (2 double-spindle) | 15.15d | 2022-09-19 | 2022-10-10 | 68SS, 64 | 2022-09-19 | 2022-10-10 | 15.15d | 0d |  | Team of Vietnamese workers (4 workers each) | 121.2h | 156,481,320 | 156,481,320 |
| 76 | 1.4.3.9 | Op. 90-CNC machine (3 double-spindle) | 12.98d | 2022-10-10 | 2022-10-27 | 75, 65 | 2022-10-10 | 2022-10-27 | 12.98d | 0d |  | Team of Vietnamese workers (4 workers each) | 103.84h | 134,067,824 | 134,067,824 |
| 77 | 1.4.3.10 | Op. 100-Washing station | 15.15d | 2022-09-19 | 2022-10-10 | 68SS, 64 | 2022-09-19 | 2022-10-10 | 15.15d | 29.17d |  | Team of Vietnamese workers (4 workers each) | 121.2h | 156,481,320 | 156,481,320 |
| 78 | 1.4.3.11 | Op. 110-Assembly station | 14.91d | 2022-10-27 | 2022-11-17 | 73, 66 | 2022-10-27 | 2022-11-17 | 14.91d | 1.28d |  | Team of Vietnamese workers (4 workers each) | 119.28h | 154,002,408 | 154,002,408 |
| 79 | 1.4.3.12 | Material handling equipment (powered conveyors, overhead conveyors, lift/lower components, manipulators, rotating tables) | 16.19d | 2022-10-27 | 2022-11-21 | 76, 66 | 2022-10-27 | 2022-11-21 | 16.19d | 0d |  | Team of Vietnamese workers (4 workers each) | 129.52h | 167,223,272 | 167,223,272 |
| 80 | 1.4.3.13 | Line manufacturing ICT system installation | 15d | 2022-11-21 | 2022-12-12 | 79, 74, 77, 78, 69 | 2022-11-21 | 2022-12-12 | 15d | 0d |  | Software developer [200%]; Software developer travel cost [3000%] | 240h | 572,292,000 | 572,292,000 |
| 81 | 1.4.3.14 | Test on Completion | 7d? | 2022-12-12 | 2022-12-21 | 80, 89FF, 91FF | 2022-12-12 | 2022-12-21 | 7d? | 0d |  | Software developer [200%]; Team of Vietnamese workers (4 workers each) [200%]; Software developer travel cost [600%] | 160h | 259,061,600 | 259,061,600 |

| ID | WBS | Task | Type | Duration | Start | Finish | Predecessors | Baseline start | Baseline finish | Baseline duration | Total slack | Free slack | Resources | Work | Cost | Baseline cost |
| --- | --- | --- | --- | --- | --- | --- | --- | --- | --- | --- | --- | --- | --- | --- | --- | --- |
| 82 | 1.5 | **ACCEPTANCE OF THE WORK** |  | 20d? | 2022-12-21 | 2023-01-18 |  | 2022-12-21 | 2023-01-18 | 20d? | 0d |  |  | 640h | 1,570,373,920 | 1,570,373,920 |
| 83 | 1.5.1 | TEST AFTER COMPLETION |  | 8d | 2022-12-21 | 2023-01-02 | 81 | 2022-12-21 | 2023-01-02 | 8d | 0d |  | Installation supervisor; Project engineer [200%]; Software developer [200%]; Team of Vietnamese workers (4 workers each) [200%]; Installation supervisor travel cost [800%]; Project engineer travel cost [1600%]; Software developer travel cost [1600%] | 448h | 998,081,920 | 998,081,920 |
| 84 | 1.5.2 | **OWNER'S TAKING OVER** |  | 12d? | 2023-01-02 | 2023-01-18 |  | 2023-01-02 | 2023-01-18 | 12d? | 0d |  |  | 192h | 572,292,000 | 572,292,000 |
| 85 | 1.5.2.1 | SUBMISSION OF TECHNICAL DOCUMENTATION |  | 9d? | 2023-01-02 | 2023-01-13 | 83 | 2023-01-02 | 2023-01-13 | 9d? | 0d |  | Project engineer [200%]; Project engineer travel cost [1800%] | 144h | 441,482,400 | 441,482,400 |
| 86 | 1.5.2.2 | Line Delivery |  | 3d | 2023-01-13 | 2023-01-18 | 85 | 2023-01-13 | 2023-01-18 | 3d | 0d |  | Project engineer; Software developer; Project engineer travel cost [300%]; Software developer travel cost [300%] | 48h | 130,809,600 | 130,809,600 |
| 87 | 1.6 | **MANAGEMENT** |  | 400.11d? | 2021-06-09 | 2022-12-21 |  | 2021-06-09 | 2022-12-21 | 400.11d? | 71.86d |  |  | 5351.28h | 11,511,186,292 | 11,511,186,292 |
| 88 | 1.6.1 | Project Management |  | 125d? | 2021-06-09 | 2021-11-30 | 6 | 2021-06-09 | 2021-11-30 | 125d? | 346.97d |  | Project manager; Project manager travel cost [3100%] | 1000h | 3,661,033,680 | 3,661,033,680 |
| 89 | 1.6.2 | Site Management |  | 297.61d | 2021-10-29 | 2022-12-21 | 55SS | 2021-10-29 | 2022-12-21 | 297.61d | 0.01d |  | Site manager; Site manager travel cost [29800%] | 2380.88h | 4,372,688,404 | 4,372,688,404 |
| 90 | 1.6.3 | Supervision to pre-erection |  | 179.99d | 2021-12-09 | 2022-08-18 | 39SS | 2021-12-09 | 2022-08-18 | 179.99d | 5.83d | 0d | Installation supervisor | 1439.92h | 2,354,441,990.4 | 2,354,441,990.4 |
| 91 | 1.6.4 | Supervision to on site erection |  | 66.31d | 2022-09-19 | 2022-12-21 | 68SS | 2022-09-19 | 2022-12-21 | 66.31d | 0.01d |  | Installation supervisor; Installation supervisor travel cost [6700%] | 530.48h | 1,123,022,217.6 | 1,123,022,217.6 |
| 92 | 1.7 | Risk buffer |  | 51.85d | 2023-01-18 | 2023-03-30 | 86 | 2023-01-18 | 2023-03-30 | 51.85d | 0d |  |  |  |  |  |
| 93 | 1.8 | End | milestone | 0d | 2023-03-30 | 2023-03-30 | 88, 92 | 2023-03-30 | 2023-03-30 | 0d | 0d |  |  |  |  |  |
