# Long Binh Manufacturing Plant Construction Project

Schedule from MS Project, 2021-05-31 to 2023-01-25, costs in ₫.
Global Manufacturing Constructions S.r.l.

## Calendars

- Standard: Mon-Fri 08:00-12:00, 13:00-17:00; Sat-Sun off.

## Resources

| Resource | Rate | Cost per use |
| --- | --- | --- |
| Project manager | 3542760 |  |
| Site manager | 1359050 |  |
| Installation supervisor | 1635120 |  |
| Team of Vietnamese workers (4 workers each) | 1291100 |  |
| Team of Italian workers (4 workers each) | 5450400 |  |
| Project engineer | 2588940 |  |
| Specialized engineer | 2180160 |  |
| Purchasing agent | 1907640 |  |
| Software engineer | 2316420 |  |
| Software developer | 1907640 |  |
| Sub-contractor (Finishes) |  | 33636240000 |
| Single-spindle CNC machine | 9265680000 |  |
| Double-spindle CNC machine | 13626000000 |  |
| Intermediate washing station | 14443560000 |  |
| Final washing station | 26434440000 |  |
| Drilling machine | 7358040000 |  |
| Assembly station | 29977200000 |  |
| Manipulator | 299772000 |  |
| Gantry loader (including robots) | 2616192000 |  |
| Powered conveyor | 7685064000 |  |
| Rotating table | 436032000 |  |
| Overhead conveyor | 2057526000 |  |
| Lift/lower component | 441482400 |  |
| Metal footbridge | 59954400 |  |
| Protection grids including doors | 8759882880 |  |
| Line manufacturing ICT system | 4251312000 |  |
| Sub-contractor (Building services) |  | 103966560000 |
| Sub-contractor (Enclosures) |  | 1266455400 |
| Sub-contractor (Industrial flooring) |  | 48925440000 |
| Sub-contractor (Site installation) |  | 18347040000 |
| Sub-contractor (Excavations & Foundations) |  | 39751920000 |
| Sub-contractor (Structures) |  | 122313600000 |
| Sub-contractor (Roofing) |  | 61156800000 |
| Supplier |  |  |
| Local Authorities |  |  |
| Ship |  |  |
| Software developer travel cost | 3815280 |  |
| Project engineer travel cost | 3815280 |  |
| Installation supervisor travel cost | 3815280 |  |
| Site manager travel cost | 3815280 |  |
| Owner |  |  |
| Single-spindle CNC machine trasportation | 48508560 |  |
| Double-spindle CNC machine trasportation | 77940720 |  |
| Intermediate washing station trasportation | 54504000 |  |
| Final washing station trasportation | 85843800 |  |
| Drilling machine trasportation | 49053600 |  |
| Assembly station trasportation | 91294200 |  |
| Manipulator trasportation | 27252000 |  |
| Gantry loader (including robots) trasportation | 20439000 |  |
| Powered conveyor trasportation | 98107200 |  |
| Rotating table trasportation | 32702400 |  |
| Overhead conveyor trasportation | 42240600 |  |
| Lift/lower component trasportation | 38152800 |  |
| Metal footbridge trasportation | 13626000 |  |
| Protection grids including doors trasportation | 102195000 |  |
| Project manager travel cost | 3815280 |  |
| Option B |  |  |

## Schedule

| ID | WBS | Task | Type | Duration | Start | Finish | Predecessors | Baseline start | Baseline finish | Baseline duration | Total slack | Free slack | Constraint | Resources | Work | Cost | Baseline cost |
| --- | --- | --- | --- | --- | --- | --- | --- | --- | --- | --- | --- | --- | --- | --- | --- | --- | --- |
| 1 | 1 | **PROJECT** |  | 432.8d? | 2021-05-31 | 2023-01-25 |  | 2021-05-31 | 2023-11-06 | 635.97d? | 0d |  |  |  | 25280.5h | 823,628,904,694.4 | 773,257,371,548 |
| 2 | 1.1 | Start | milestone | 0d | 2021-05-31 | 2021-05-31 |  | 2021-05-31 | 2021-05-31 | 0d | 0d |  |  |  |  |  |  |
| 3 | 1.2 | **INITIALIZATION** |  | 109.5d? | 2021-05-31 | 2021-10-29 |  | 2021-05-31 | 2021-11-23 | 127d? | 0d |  |  |  | 3156h | 9,593,521,560 | 9,593,521,560 |
| 4 | 1.2.1 | **START-UP** |  | 7d | 2021-05-31 | 2021-06-08 |  | 2021-05-31 | 2021-06-08 | 7d | 0d |  |  |  | 56h | 198,394,560 | 198,394,560 |
| 5 | 1.2.1.1 | Contract finalization and signature |  | 2d | 2021-05-31 | 2021-06-01 | 2 | 2021-05-31 | 2021-06-01 | 2d | 0d |  |  | Project manager | 16h | 56,684,160 | 56,684,160 |
| 6 | 1.2.1.2 | Detailed Planning |  | 5d | 2021-06-02 | 2021-06-08 | 5 | 2021-06-02 | 2021-06-08 | 5d | 0d |  |  | Project manager | 40h | 141,710,400 | 141,710,400 |
| 7 | 1.2.2 | **ENGINEERING PHASE** |  | 102.5d? | 2021-06-09 | 2021-10-29 |  | 2021-06-09 | 2021-11-23 | 120d? | 0d |  |  |  | 3100h | 9,395,127,000 | 9,395,127,000 |
| 8 | 1.2.2.1 | Detailed Engineering - Process |  | 13.12d | 2021-07-05 | 2021-07-22 | 11 | 2021-06-09 | 2021-07-02 | 17.5d | 5.83d | 0d |  | Project engineer [200%]; Specialized engineer [200%] | 350h | 848,899,800 | 848,899,800 |
| 9 | 1.2.2.2 | Detailed Engineering - Layout |  | 9.38d? | 2021-07-22 | 2021-08-05 | 8 | 2021-07-02 | 2021-07-22 | 13.75d? | 5.83d | 0d |  | Project engineer [200%]; Specialized engineer [200%] | 260h | 628,158,600 | 628,158,600 |
| 10 | 1.2.2.3 | Detailed Engineering - Utilities |  | 7.5d? | 2021-08-05 | 2021-08-16 | 9 | 2021-07-22 | 2021-08-02 | 7.5d? | 5.83d | 0d |  | Project engineer [200%]; Specialized engineer [200%] | 210h | 506,887,200 | 506,887,200 |
| 11 | 1.2.2.4 | Industrial Building Design |  | 18.75d? | 2021-06-09 | 2021-07-05 | 6 | 2021-08-02 | 2021-09-07 | 26.25d? | 0d |  |  | Project engineer [200%]; Specialized engineer [200%] | 510h | 1,234,515,600 | 1,234,515,600 |
| 12 | 1.2.2.5 | Line manufacturing ICT system specification & development |  | 25d | 2021-08-16 | 2021-09-20 | 10 | 2021-09-08 | 2021-10-12 | 25d | 203.05d | 194.23d |  | Software developer [200%]; Software engineer [300%]; Line manufacturing ICT system | 610h | 5,500,816,200 | 5,500,816,200 |
| 13 | 1.2.2.6 | Approval of engineering by the client |  | 20d | 2021-08-03 | 2021-08-31 | 10SS-2.23d | 2021-10-13 | 2021-11-09 | 20d | 11.79d | 5.96d |  | Owner | 160h |  |  |
| 14 | 1.2.2.7 | Permits and authorizations from local authorities |  | 90d | 2021-06-25 | 2021-10-29 | 11SS+12.5d | 2021-11-10 | 2021-11-23 | 10d | 0d |  | start no earlier than 2021-06-25 | Project engineer [200%]; Specialized engineer [200%]; Local Authorities | 1000h | 675,849,600 | 675,849,600 |
| 15 | 1.3 | **WORK IN ITALY** |  | 293.23d? | 2021-07-05 | 2022-08-18 |  | 2021-11-24 | 2022-08-31 | 201d? | 5.82d |  |  |  | 9896h | 331,760,942,640 | 322,933,474,800 |
| 16 | 1.3.1 | **PURCHASE CIVIL WORKS** |  | 33d? | 2021-07-05 | 2021-08-19 |  | 2021-11-24 | 2022-01-03 | 28.5d? | 50.75d |  |  |  | 120h | 250,718,400 | 250,718,400 |
| 17 | 1.3.1.1 | Request for proposals |  | 2.5d? | 2021-07-05 | 2021-07-08 | 11 | 2021-11-24 | 2021-11-26 | 2.5d? | 57.5d | 0d |  | Purchasing agent [200%] | 40h | 76,305,600 | 76,305,600 |
| 18 | 1.3.1.2 | Collection of proposals |  | 20d | 2021-07-08 | 2021-08-05 | 17 | 2021-11-26 | 2021-12-24 | 20d | 57.5d | 6.75d |  |  |  |  |  |
| 19 | 1.3.1.3 | Competitive proposal analysis |  | 2.75d | 2021-08-16 | 2021-08-18 | 18 | 2021-12-24 | 2021-12-30 | 4d | 50.75d | 0d | start no earlier than 2021-08-16 | Project engineer [200%]; Purchasing agent [200%] | 64h | 143,890,560 | 143,890,560 |
| 20 | 1.3.1.4 | Orders |  | 1d | 2021-08-18 | 2021-08-19 | 19 | 2021-12-30 | 2022-01-03 | 2d | 50.75d |  |  | Purchasing agent [200%] | 16h | 30,522,240 | 30,522,240 |
| 21 | 1.3.2 | **PURCHASE MACHINES** |  | 21.6d? | 2021-08-16 | 2021-09-15 |  | 2021-11-24 | 2022-01-03 | 28.5d? | 5.82d |  |  |  | 120h | 250,718,400 | 250,718,400 |
| 22 | 1.3.2.1 | Request for proposals |  | 2.5d? | 2021-08-16 | 2021-08-19 | 10 | 2021-11-24 | 2021-11-26 | 2.5d? | 5.83d | 0d |  | Purchasing agent [200%] | 40h | 76,305,600 | 76,305,600 |
| 23 | 1.3.2.2 | Collection of proposals |  | 20d | 2021-08-18 | 2021-09-15 | 22SS+1.6d | 2021-11-26 | 2021-12-24 | 20d | 5.83d | 0d |  |  |  |  |  |
| 24 | 1.3.2.3 | Competitive proposal analysis |  | 2d | 2021-09-06 | 2021-09-08 | 23SS+13.3d | 2021-12-24 | 2021-12-30 | 4d | 5.83d | 0d |  | Project engineer [200%]; Purchasing agent [200%] | 64h | 143,890,560 | 143,890,560 |
| 25 | 1.3.2.4 | Orders |  | 1d | 2021-09-07 | 2021-09-08 | 24SS+1.33d, 13 | 2021-12-30 | 2022-01-03 | 2d | 5.83d | 0d |  | Purchasing agent [200%] | 16h | 30,522,240 | 30,522,240 |

| ID | WBS | Task | Duration | Start | Finish | Predecessors | Baseline start | Baseline finish | Baseline duration | Total slack | Free slack | Resources | Work | Cost | Baseline cost |
| --- | --- | --- | --- | --- | --- | --- | --- | --- | --- | --- | --- | --- | --- | --- | --- |
| 26 | 1.3.3 | **EQUIPMENT MANUFACTURING** | 167d | 2021-09-08 | 2022-04-29 |  | 2022-01-03 | 2022-07-04 | 130d | 5.82d |  |  | 5768h | 311,145,349,680 | 313,118,394,480 |
| 27 | 1.3.3.1 | CNC machine (single-spindle and double-spindle) op10, 80 | 110d | 2021-10-08 | 2022-03-11 | 25FS+22d |  |  |  | 8.82d | 0d | Double-spindle CNC machine [200%]; Single-spindle CNC machine [200%] |  | 45,783,360,000 |  |
| 28 | 1.3.3.2 | CNC machine (single-spindle and double-spindle) op30 | 110d | 2021-10-14 | 2022-03-17 | 25FS+26d |  |  |  | 14.82d | 9d | Double-spindle CNC machine [200%] |  | 27,252,000,000 |  |
| 29 | 1.3.3.3 | CNC machine (single-spindle and double-spindle) op40 | 110d | 2021-09-08 | 2022-02-09 | 25 |  |  |  | 5.82d | 0d | Double-spindle CNC machine [200%]; Supplier | 880h | 27,252,000,000 |  |
| 30 | 1.3.3.4 | CNC machine (single-spindle and double-spindle) op50, 90 | 110d | 2021-11-26 | 2022-04-29 | 25FS+57d |  |  |  | 8.82d | 0d | Double-spindle CNC machine [500%]; Supplier; Single-spindle CNC machine | 880h | 77,395,680,000 |  |
| 31 | 1.3.3.5 | Washing station | 70d | 2021-09-08 | 2021-12-15 | 25 | 2022-01-03 | 2022-04-11 | 70d | 16.82d | 0d | Final washing station; Intermediate washing station; Supplier | 560h | 40,878,000,000 | 41,018,347,800 |
| 32 | 1.3.3.6 | Drilling machine | 66d | 2021-09-08 | 2021-12-09 | 25 | 2022-01-03 | 2022-04-05 | 66d | 5.83d | 0d | Drilling machine; Supplier | 528h | 7,358,040,000 | 7,407,093,600 |
| 33 | 1.3.3.7 | Assembly station | 100d | 2021-09-08 | 2022-01-26 | 25 | 2022-01-03 | 2022-05-23 | 100d | 8.82d | 0d | Assembly station [200%]; Supplier | 800h | 59,954,400,000 | 60,136,988,400 |
| 34 | 1.3.3.8 | Gantry loaders and robotized arms (total values) | 95d | 2021-09-08 | 2022-01-19 | 25 | 2022-01-03 | 2022-05-16 | 95d | 20.82d | 6d | Gantry loader (including robots); Supplier | 760h | 2,616,192,000 | 2,636,631,000 |
| 35 | 1.3.3.9 | Material handling equipment (powered conveyors, overhead conveyors, lift/lower components, manipulators, rotating tables). Total values | 130d | 2021-09-08 | 2022-03-09 | 25 | 2022-01-03 | 2022-07-04 | 130d | 55.82d | 41d | Lift/lower component; Manipulator [200%]; Overhead conveyor; Powered conveyor; Rotating table [700%]; Supplier | 1040h | 13,835,840,400 | 14,297,761,800 |
| 36 | 1.3.3.10 | Metal foodbridges and protection grids (total values) | 40d | 2021-09-08 | 2021-11-03 | 25 | 2022-01-03 | 2022-02-28 | 40d | 75.82d | 61d | Metal footbridge; Protection grids including doors; Supplier | 320h | 8,819,837,280 | 8,935,658,280 |
| 37 | 1.3.4 | **PRE- ERECTION** | 180d | 2021-12-09 | 2022-08-18 |  | 2022-04-05 | 2022-08-31 | 106.5d | 5.82d |  |  | 3888h | 20,114,156,160 | 9,313,643,520 |
| 38 | 1.3.4.1 | Op. 10-CNC machine (2 single-spindle) | 35d | 2022-03-11 | 2022-04-29 | 48, 34, 36, 27 | 2022-10-13 | 2022-10-26 | 10d | 8.82d | 0d | Team of Italian workers (4 workers each) | 280h | 1,526,112,000 | 103,288,000 |
| 39 | 1.3.4.2 | Op. 20-Drilling machine | 35d | 2021-12-09 | 2022-01-27 | 32 | 2022-10-13 | 2022-11-02 | 15d | 5.83d | 0d | Team of Italian workers (4 workers each) | 280h | 1,526,112,000 | 154,932,000 |
| 40 | 1.3.4.3 | Op. 30-CNC machine (2 double-spindle) | 35d | 2022-03-30 | 2022-05-18 | 41, 34, 36, 28 | 2022-10-13 | 2022-10-26 | 10d | 5.82d | 0d | Team of Italian workers (4 workers each) | 280h | 1,526,112,000 | 103,288,000 |
| 41 | 1.3.4.4 | Op. 40-CNC machine (2 double-spindle) | 35d | 2022-02-09 | 2022-03-30 | 39, 34, 36, 29 | 2022-10-13 | 2022-10-26 | 10d | 5.82d | 0d | Team of Italian workers (4 workers each) | 280h | 1,526,112,000 | 103,288,000 |
| 42 | 1.3.4.5 | Op. 50-CNC machine (1 single-spindle and 2 double-spindle) | 35d | 2022-04-29 | 2022-06-17 | 38, 34, 36, 30 | 2022-10-13 | 2022-10-26 | 10d | 8.82d | 3d | Team of Italian workers (4 workers each) | 280h | 1,526,112,000 | 103,288,000 |
| 43 | 1.3.4.6 | Op. 60-Washing station | 22d | 2021-12-15 | 2022-01-14 | 31 | 2022-10-13 | 2022-10-26 | 10d | 16.82d | 8d | Team of Italian workers (4 workers each) | 176h | 959,270,400 | 103,288,000 |
| 44 | 1.3.4.7 | Op. 70-Assembly station | 32d | 2022-01-26 | 2022-03-11 | 33, 43 | 2022-10-13 | 2022-11-01 | 14d | 8.82d | 0d | Team of Italian workers (4 workers each) | 256h | 1,395,302,400 | 144,603,200 |
| 45 | 1.3.4.8 | Op. 80-CNC machine (2 double-spindle) | 35d | 2022-03-11 | 2022-04-29 | 44, 34, 36, 27 | 2022-10-13 | 2022-10-26 | 10d | 8.82d | 0d | Team of Italian workers (4 workers each) | 280h | 1,526,112,000 | 103,288,000 |
| 46 | 1.3.4.9 | Op. 90-CNC machine (3 double-spindle) | 35d | 2022-04-29 | 2022-06-17 | 45, 34, 36, 30 | 2022-10-13 | 2022-10-26 | 10d | 8.82d | 3d | Team of Italian workers (4 workers each) | 280h | 1,526,112,000 | 103,288,000 |
| 47 | 1.3.4.10 | Op. 100-Washing station | 22d | 2021-12-15 | 2022-01-14 | 31 | 2022-10-13 | 2022-10-26 | 10d | 16.82d | 8d | Team of Italian workers (4 workers each) | 176h | 959,270,400 | 103,288,000 |
| 48 | 1.3.4.11 | Op. 110-Assembly station | 32d | 2022-01-26 | 2022-03-11 | 33, 47 | 2022-10-13 | 2022-11-01 | 14d | 8.82d | 0d | Team of Italian workers (4 workers each) | 256h | 1,395,302,400 | 144,603,200 |
| 49 | 1.3.4.12 | Material handling equipment (powered conveyors, overhead conveyors, lift/lower components, manipulators, rotating tables). Total values | 25d | 2022-05-18 | 2022-06-22 | 35, 40 | 2022-10-13 | 2022-11-02 | 15d | 5.82d | 0d | Team of Italian workers (4 workers each) | 200h | 1,090,080,000 | 154,932,000 |
| 50 | 1.3.4.13 | Line manufacturing ICT system installation | 15d | 2022-06-22 | 2022-07-13 | 49, 42, 46, 12 | 2022-11-03 | 2022-11-14 | 7.5d | 5.82d | 0d | Software developer [200%] | 240h | 457,833,600 | 228,916,800 |
| 51 | 1.3.4.14 | Preliminary line testing | 8d | 2022-07-13 | 2022-07-25 | 50 | 2022-08-18 | 2022-08-23 | 4d | 5.82d | 0d | Software developer [200%]; Team of Italian workers (4 workers each) [200%] | 192h | 819,740,160 | 409,870,080 |
| 52 | 1.3.4.15 | Line disassembling (for all equipment) | 18d | 2022-07-25 | 2022-08-18 | 51, 91FF | 2022-08-24 | 2022-08-31 | 6d | 5.82d | 5.02d | Team of Italian workers (4 workers each) [300%] | 432h | 2,354,572,800 | 784,857,600 |

| ID | WBS | Task | Duration | Start | Finish | Predecessors | Baseline start | Baseline finish | Baseline duration | Total slack | Free slack | Constraint | Resources | Work | Cost | Baseline cost |
| --- | --- | --- | --- | --- | --- | --- | --- | --- | --- | --- | --- | --- | --- | --- | --- | --- |
| 53 | 1.4 | **WORK IN VIETNAM** | 303.3d? | 2021-10-29 | 2022-12-28 |  | 2022-01-03 | 2023-11-06 | 480.47d? | 0d |  |  |  | 6147.76h | 469,020,828,200 | 436,218,749,748 |
| 54 | 1.4.1 | **CIVIL WORKS ERECTION PHASE** | 231.3d | 2021-10-29 | 2022-09-19 |  | 2022-01-03 | 2023-11-06 | 480.47d | 0d |  |  | Option B [0.1%] | 3843.76h | 464,791,055,400 | 434,587,917,428 |
| 55 | 1.4.1.1 | Site installation (working days) | 15d | 2021-10-29 | 2021-11-19 | 20, 14 | 2022-01-03 | 2022-01-24 | 15d | 0d |  |  | Sub-contractor (Site installation) | 120h | 18,347,040,000 | 18,347,040,000 |
| 56 | 1.4.1.2 | Excavations & Foundations | 48d | 2021-11-19 | 2022-01-26 | 55 | 2022-01-24 | 2022-03-31 | 48d | 0d |  |  | Sub-contractor (Excavations & Foundations) | 384h | 39,751,920,000 | 39,751,920,000 |
| 57 | 1.4.1.3 | Structures | 60d | 2021-12-07 | 2022-03-01 | 56SS+12d | 2022-03-31 | 2022-06-23 | 60d | 0d |  |  | Sub-contractor (Structures) | 480h | 122,313,600,000 | 122,313,600,000 |
| 58 | 1.4.1.4 | Roofing | 60d | 2021-12-28 | 2022-03-22 | 57SS+15d | 2022-06-23 | 2022-09-15 | 60d | 0d |  |  | Sub-contractor (Roofing) | 480h | 61,156,800,000 | 61,156,800,000 |
| 59 | 1.4.1.5 | Enclosures | 9.47d | 2022-01-18 | 2022-01-31 | 58SS+15d | 2022-09-15 | 2022-09-28 | 9.47d | 0d |  |  | Sub-contractor (Enclosures) | 75.76h | 1,266,455,400 | 1,266,455,400 |
| 60 | 1.4.1.6 | Industrial flooring | 48d | 2022-01-20 | 2022-03-29 | 59SS+2.3d | 2022-09-28 | 2022-12-05 | 48d | 0d |  |  | Sub-contractor (Industrial flooring) | 384h | 48,925,440,000 | 48,925,440,000 |
| 61 | 1.4.1.7 | Building services | 160d | 2022-02-07 | 2022-09-19 | 60SS+12d | 2022-12-05 | 2023-07-17 | 160d | 0d |  |  | Sub-contractor (Building services) | 1280h | 103,966,560,000 | 103,966,560,000 |
| 62 | 1.4.1.8 | Finishes | 80d | 2022-05-30 | 2022-09-19 | 61FF | 2023-07-17 | 2023-11-06 | 80d | 0d |  |  | Sub-contractor (Finishes) | 640h | 33,636,240,000 | 33,636,240,000 |
| 63 | 1.4.2 | **TRANSPORTATION PHASE** | 55d | 2022-08-15 | 2022-10-28 |  | 2022-09-01 | 2022-10-12 | 30d | 0.8d |  |  |  | 800h | 1,973,044,800 |  |
| 64 | 1.4.2.1 | Ship trasportation | 25d | 2022-08-15 | 2022-09-16 | 52SS+9d, 61FF-0.8d, 62FF-0.8d |  |  |  | 0.8d |  |  | Ship; Double-spindle CNC machine trasportation [400%]; Gantry loader (including robots) trasportation; Metal footbridge trasportation; Single-spindle CNC machine trasportation [300%]; Protection grids including doors trasportation | 200h | 593,548,560 |  |
| 65 | 1.4.2.2 | Ship trasportation | 25d | 2022-08-29 | 2022-09-30 | 52, 69FF-0.8d |  |  |  | 0.8d |  |  | Ship; Double-spindle CNC machine trasportation [500%]; Intermediate washing station trasportation | 200h | 444,207,600 |  |
| 66 | 1.4.2.3 | Ship trasportation | 25d | 2022-09-12 | 2022-10-14 | 52, 72FF-0.8d |  |  |  | 0.8d |  | finish no earlier than 2022-09-22 | Ship; Assembly station trasportation [200%]; Drilling machine trasportation | 200h | 231,642,000 |  |
| 67 | 1.4.2.4 | Ship trasportation | 25d | 2022-09-26 | 2022-10-28 | 52, 75FF-4.8d |  |  |  | 5.8d | 4.8d |  | Ship; Lift/lower component trasportation; Manipulator trasportation [200%]; Overhead conveyor trasportation; Powered conveyor trasportation; Rotating table trasportation [700%]; Final washing station trasportation; Double-spindle CNC machine trasportation [200%] | 200h | 703,646,640 |  |
| 68 | 1.4.3 | **ON SITE ERECTION** | 72d? | 2022-09-19 | 2022-12-28 |  | 2022-10-13 | 2022-11-17 | 26d? | 0d |  |  |  | 1504h | 2,256,728,000 | 1,630,832,320 |
| 69 | 1.4.3.1 | Op. 10-CNC machine (2 single-spindle) | 10d | 2022-09-19 | 2022-10-03 | 61, 62, 64 | 2022-10-13 | 2022-10-26 | 10d | 0d |  |  | Team of Vietnamese workers (4 workers each) | 80h | 103,288,000 | 103,288,000 |
| 70 | 1.4.3.2 | Op. 20-Drilling machine | 15d | 2022-10-17 | 2022-11-07 | 77, 66 | 2022-10-13 | 2022-11-02 | 15d | 0d |  |  | Team of Vietnamese workers (4 workers each) | 120h | 154,932,000 | 154,932,000 |
| 71 | 1.4.3.3 | Op. 30-CNC machine (2 double-spindle) | 10d | 2022-09-19 | 2022-10-03 | 69SS, 64 | 2022-10-13 | 2022-10-26 | 10d | 0d |  |  | Team of Vietnamese workers (4 workers each) | 80h | 103,288,000 | 103,288,000 |
| 72 | 1.4.3.4 | Op. 40-CNC machine (2 double-spindle) | 10d | 2022-10-03 | 2022-10-17 | 69, 65 | 2022-10-13 | 2022-10-26 | 10d | 0.8d | 0d |  | Team of Vietnamese workers (4 workers each) | 80h | 103,288,000 | 103,288,000 |
| 73 | 1.4.3.5 | Op. 50-CNC machine (1 single-spindle and 2 double-spindle) | 10d | 2022-09-19 | 2022-10-03 | 69SS, 64 | 2022-10-13 | 2022-10-26 | 10d | 6d | 0d |  | Team of Vietnamese workers (4 workers each) | 80h | 103,288,000 | 103,288,000 |
| 74 | 1.4.3.6 | Op. 60-Washing station | 10d | 2022-10-03 | 2022-10-17 | 73, 65 | 2022-10-13 | 2022-10-26 | 10d | 6d | 0d |  | Team of Vietnamese workers (4 workers each) | 80h | 103,288,000 | 103,288,000 |
| 75 | 1.4.3.7 | Op. 70-Assembly station | 14d | 2022-10-17 | 2022-11-04 | 72, 66 | 2022-10-13 | 2022-11-01 | 14d | 5.8d | 0d |  | Team of Vietnamese workers (4 workers each) | 112h | 144,603,200 | 144,603,200 |
| 76 | 1.4.3.8 | Op. 80-CNC machine (2 double-spindle) | 10d | 2022-11-04 | 2022-11-18 | 75, 67 | 2022-10-13 | 2022-10-26 | 10d | 6d |  |  | Team of Vietnamese workers (4 workers each) | 80h | 103,288,000 | 103,288,000 |
| 77 | 1.4.3.9 | Op. 90-CNC machine (3 double-spindle) | 10d | 2022-10-03 | 2022-10-17 | 71, 65 | 2022-10-13 | 2022-10-26 | 10d | 0d |  |  | Team of Vietnamese workers (4 workers each) | 80h | 103,288,000 | 103,288,000 |
| 78 | 1.4.3.10 | Op. 100-Washing station | 10d | 2022-11-04 | 2022-11-18 | 79, 67 | 2022-10-13 | 2022-10-26 | 10d | 6d |  |  | Team of Vietnamese workers (4 workers each) | 80h | 103,288,000 | 103,288,000 |
| 79 | 1.4.3.11 | Op. 110-Assembly station | 14d | 2022-10-17 | 2022-11-04 | 74, 66 | 2022-10-13 | 2022-11-01 | 14d | 6d | 0d |  | Team of Vietnamese workers (4 workers each) | 112h | 144,603,200 | 144,603,200 |
| 80 | 1.4.3.12 | Material handling equipment (powered conveyors, overhead conveyors, lift/lower components, manipulators, rotating tables). Total values | 15d | 2022-11-07 | 2022-11-28 | 70, 67 | 2022-10-13 | 2022-11-02 | 15d | 0d |  |  | Team of Vietnamese workers (4 workers each) | 120h | 154,932,000 | 154,932,000 |
| 81 | 1.4.3.13 | Line manufacturing ICT system installation | 15d | 2022-11-28 | 2022-12-19 | 80, 78, 76 | 2022-11-03 | 2022-11-14 | 7.5d | 0d |  |  | Software developer [200%]; Software developer travel cost [3000%] | 240h | 572,292,000 | 228,916,800 |
| 82 | 1.4.3.14 | Test on Completion | 7d? | 2022-12-19 | 2022-12-28 | 81, 90FF, 92FF | 2022-11-14 | 2022-11-17 | 3.5d? | 0d |  |  | Software developer [200%]; Team of Vietnamese workers (4 workers each) [200%]; Software developer travel cost [600%] | 160h | 259,061,600 | 118,084,960 |

| ID | WBS | Task | Type | Duration | Start | Finish | Predecessors | Baseline start | Baseline finish | Baseline duration | Total slack | Free slack | Resources | Work | Cost | Baseline cost |
| --- | --- | --- | --- | --- | --- | --- | --- | --- | --- | --- | --- | --- | --- | --- | --- | --- |
| 83 | 1.5 | **ACCEPTANCE OF THE WORK** |  | 20d? | 2022-12-28 | 2023-01-25 |  | 2022-11-18 | 2022-12-15 | 20d? | 0d |  |  | 640h | 1,570,373,920 | 955,784,480 |
| 84 | 1.5.1 | TEST AFTER COMPLETION |  | 8d | 2022-12-28 | 2023-01-09 | 82 | 2022-11-18 | 2022-11-29 | 8d | 0d |  | Installation supervisor; Project engineer [200%]; Software developer [200%]; Team of Vietnamese workers (4 workers each) [200%]; Installation supervisor travel cost [800%]; Project engineer travel cost [1600%]; Software developer travel cost [1600%] | 448h | 998,081,920 | 475,059,200 |
| 85 | 1.5.2 | **OWNER'S TAKING OVER** |  | 12d? | 2023-01-09 | 2023-01-25 |  | 2022-11-30 | 2022-12-15 | 12d? | 0d |  |  | 192h | 572,292,000 | 480,725,280 |
| 86 | 1.5.2.1 | SUBMISSION OF TECHNICAL DOCUMENTATION |  | 9d? | 2023-01-09 | 2023-01-20 | 84 | 2022-11-30 | 2022-12-12 | 9d? | 0d |  | Project engineer [200%]; Project engineer travel cost [1800%] | 144h | 441,482,400 | 372,807,360 |
| 87 | 1.5.2.2 | Line Delivery |  | 3d | 2023-01-20 | 2023-01-25 | 86 | 2022-12-13 | 2022-12-15 | 3d | 0d |  | Project engineer; Software developer; Project engineer travel cost [300%]; Software developer travel cost [300%] | 48h | 130,809,600 | 107,917,920 |
| 88 | 1.6 | **MANAGEMENT** |  | 405.7d? | 2021-06-09 | 2022-12-28 |  | 2021-05-31 | 2022-08-31 | 328d? | 20.1d |  |  | 5440.72h | 11,683,238,374.4 | 3,555,840,960 |
| 89 | 1.6.1 | Project Management |  | 125d? | 2021-06-09 | 2021-11-30 | 6 | 2021-06-09 | 2021-11-30 | 125d? | 300.8d |  | Project manager; Project manager travel cost [3100%] | 1000h | 3,661,033,680 | 3,542,760,000 |
| 90 | 1.6.2 | Site Management |  | 303.2d | 2021-10-29 | 2022-12-28 | 55SS | 2021-05-31 | 2021-05-31 | 1d | 0.1d |  | Site manager; Site manager travel cost [30300%] | 2425.6h | 4,452,541,520 |  |
| 91 | 1.6.3 | Supervision to pre-erection |  | 179.99d | 2021-12-09 | 2022-08-18 | 39SS | 2022-08-31 | 2022-08-31 | 1d | 5.83d | 0d | Installation supervisor | 1439.92h | 2,354,441,990.4 | 13,080,960 |
| 92 | 1.6.4 | Supervision to on site erection |  | 71.9d | 2022-09-19 | 2022-12-28 | 69SS | 2021-05-31 | 2021-05-31 | 1d | 0.1d |  | Installation supervisor; Installation supervisor travel cost [7200%] | 575.2h | 1,215,221,184 |  |
| 93 | 1.7 | End | milestone | 0d | 2023-01-25 | 2023-01-25 | 87, 89 | 2022-12-15 | 2022-12-15 | 0d | 0d |  |  |  |  |  |
